How a schedule from an exported table changed from version to version. A marks actual dates.

## Version 1 (saved 2026-11-20)

| Task | Start | Finish |
| --- | --- | --- |
| Smart Fridge Development | 2026-11-20 | 2028-11-20 |
| Project Initiation and Market Research | 2026-11-20 | 2027-01-20 |
| Project kickoff and governance | 2026-11-20 | 2026-11-27 |
| Market and competitor analysis | 2026-11-28 | 2026-12-11 |
| Customer needs and market positioning | 2026-12-12 | 2026-12-25 |
| Technical and economic feasibility | 2026-12-26 | 2027-01-02 |
| Initial risk assessment | 2027-01-03 | 2027-01-20 |
| Product Requirements and System Architecture | 2027-01-21 | 2027-05-20 |
| Functional requirements | 2027-01-21 | 2027-02-10 |
| Technical specifications | 2027-02-11 | 2027-03-02 |
| System architecture | 2027-03-03 | 2027-03-23 |
| Hardware/software interface definition | 2027-03-24 | 2027-04-13 |
| Cost and performance targets | 2027-04-14 | 2027-05-04 |
| Requirements approval | 2027-05-05 | 2027-05-20 |
| Hardware and Mechanical Engineering | 2027-04-01 | 2028-01-20 |
| Refrigeration system engineering | 2027-04-01 | 2027-06-30 |
| Cabinet and insulation design | 2027-07-01 | 2027-09-15 |
| Electrical and electronic architecture | 2027-07-01 | 2027-09-15 |
| Sensors and component selection | 2027-09-16 | 2027-10-31 |
| CAD design and engineering reviews | 2027-11-01 | 2028-01-05 |
| Design freeze | 2028-01-06 | 2028-01-20 |
| Software, Embedded Systems and IoT | 2027-04-01 | 2028-01-31 |
| Embedded software architecture | 2027-04-01 | 2027-06-30 |
| Firmware development | 2027-07-01 | 2027-10-31 |
| Sensor data acquisition | 2027-08-01 | 2027-10-15 |
| IoT and connectivity development | 2027-08-15 | 2028-01-01 |
| Mobile and cloud integration | 2027-10-16 | 2027-12-30 |
| Initial smart functionalities | 2027-12-01 | 2028-01-15 |
| Hardware/software integration | 2028-01-16 | 2028-01-31 |
| Industrialization, Procurement and Tooling | 2027-06-01 | 2028-02-20 |
| Supplier identification and selection | 2027-06-01 | 2027-08-15 |
| Component sourcing | 2027-08-16 | 2027-10-10 |
| Supplier qualification | 2027-10-11 | 2027-11-25 |
| Manufacturing process design | 2027-11-26 | 2028-01-05 |
| Tooling preparation | 2028-01-06 | 2028-02-10 |
| Production cost analysis | 2028-02-11 | 2028-02-20 |
| Wave 1 – Core Prototype Development | 2027-10-01 | 2028-02-20 |
| Prototype component procurement | 2027-10-01 | 2027-12-15 |
| Mechanical and electrical assembly | 2028-01-01 | 2028-01-31 |
| Refrigeration system integration | 2028-02-01 | 2028-02-05 |
| Embedded software integration | 2028-02-06 | 2028-02-10 |
| Core IoT functionality integration | 2028-02-11 | 2028-02-13 |
| First integrated prototype | 2028-02-14 | 2028-02-15 |
| Prototype review and approval | 2028-02-16 | 2028-02-20 |
| Testing and Quality Assurance | 2028-02-21 | 2028-07-20 |
| Functional testing | 2028-02-21 | 2028-04-10 |
| Refrigeration performance testing | 2028-04-11 | 2028-05-10 |
| Energy-efficiency testing | 2028-05-11 | 2028-05-31 |
| Reliability and durability testing | 2028-06-01 | 2028-06-21 |
| Electrical and safety testing | 2028-06-22 | 2028-07-02 |
| Connectivity testing | 2028-07-03 | 2028-07-10 |
| Defect correction and retesting | 2028-07-11 | 2028-07-20 |
| Wave 2 – Advanced Smart Features | 2028-02-21 | 2028-07-30 |
| Smart screen integration | 2028-02-21 | 2028-04-20 |
| AI feature development | 2028-04-21 | 2028-06-10 |
| Advanced software functionalities | 2028-06-11 | 2028-06-30 |
| User interface development | 2028-06-01 | 2028-07-10 |
| Integration with Wave 1 architecture | 2028-07-11 | 2028-07-15 |
| System optimization | 2028-07-16 | 2028-07-20 |
| Advanced feature validation | 2028-07-21 | 2028-07-30 |
| Final Validation, Certification and Market Launch | 2028-07-21 | 2028-11-20 |
| Final system integration | 2028-07-21 | 2028-08-10 |
| Complete product validation | 2028-08-11 | 2028-09-20 |
| Regulatory compliance and certification | 2028-09-21 | 2028-10-10 |
| Final quality approval | 2028-10-11 | 2028-10-20 |
| Production readiness review | 2028-10-21 | 2028-11-01 |
| Launch preparation | 2028-11-02 | 2028-11-15 |
| Commercial launch and project closure | 2028-11-16 | 2028-11-20 |

## Version 2 (saved 2026-11-25)

Note of the change: Revise project plan dates and task assignments

Last finish 2028-11-20 → 2029-01-01 (+42d).

Changed:

| Task | Start | Finish |
| --- | --- | --- |
| Smart Fridge Development | 2026-11-20 → 2027-01-01 (+42d) | 2028-11-20 → 2029-01-01 (+42d) |
| Project Initiation and Market Research | 2026-11-20 → 2027-01-01 (+42d) | 2027-01-20 → 2027-03-03 (+42d) |
| Project kickoff and governance | 2026-11-20 → 2027-01-01 (+42d) | 2026-11-27 → 2027-01-08 (+42d) |
| Market and competitor analysis | 2026-11-28 → 2027-01-09 (+42d) | 2026-12-11 → 2027-01-22 (+42d) |
| Customer needs and market positioning | 2026-12-12 → 2027-01-23 (+42d) | 2026-12-25 → 2027-02-05 (+42d) |
| Technical and economic feasibility | 2026-12-26 → 2027-02-06 (+42d) | 2027-01-02 → 2027-02-13 (+42d) |
| Initial risk assessment | 2027-01-03 → 2027-02-14 (+42d) | 2027-01-20 → 2027-03-03 (+42d) |
| Product Requirements and System Architecture | 2027-01-21 → 2027-03-04 (+42d) | 2027-05-20 → 2027-07-01 (+42d) |
| Functional requirements | 2027-01-21 → 2027-03-04 (+42d) | 2027-02-10 → 2027-03-24 (+42d) |
| Technical specifications | 2027-02-11 → 2027-03-25 (+42d) | 2027-03-02 → 2027-04-13 (+42d) |
| System architecture | 2027-03-03 → 2027-04-14 (+42d) | 2027-03-23 → 2027-05-04 (+42d) |
| Hardware/software interface definition | 2027-03-24 → 2027-05-05 (+42d) | 2027-04-13 → 2027-05-25 (+42d) |
| Cost and performance targets | 2027-04-14 → 2027-05-26 (+42d) | 2027-05-04 → 2027-06-15 (+42d) |
| Requirements approval | 2027-05-05 → 2027-06-16 (+42d) | 2027-05-20 → 2027-07-01 (+42d) |
| Hardware and Mechanical Engineering | 2027-04-01 → 2027-05-13 (+42d) | 2028-01-20 → 2028-03-02 (+42d) |
| Refrigeration system engineering | 2027-04-01 → 2027-05-13 (+42d) | 2027-06-30 → 2027-08-11 (+42d) |
| Cabinet and insulation design | 2027-07-01 → 2027-08-12 (+42d) | 2027-09-15 → 2027-10-27 (+42d) |
| Electrical and electronic architecture | 2027-07-01 → 2027-08-12 (+42d) | 2027-09-15 → 2027-10-27 (+42d) |
| Sensors and component selection | 2027-09-16 → 2027-10-28 (+42d) | 2027-10-31 → 2027-12-12 (+42d) |
| CAD design and engineering reviews | 2027-11-01 → 2027-12-13 (+42d) | 2028-01-05 → 2028-02-16 (+42d) |
| Design freeze | 2028-01-06 → 2028-02-17 (+42d) | 2028-01-20 → 2028-03-02 (+42d) |
| Software, Embedded Systems and IoT | 2027-04-01 → 2027-05-13 (+42d) | 2028-01-31 → 2028-03-13 (+42d) |
| Embedded software architecture | 2027-04-01 → 2027-05-13 (+42d) | 2027-06-30 → 2027-08-11 (+42d) |
| Firmware development | 2027-07-01 → 2027-08-12 (+42d) | 2027-10-31 → 2027-12-12 (+42d) |
| Sensor data acquisition | 2027-08-01 → 2027-09-12 (+42d) | 2027-10-15 → 2027-11-26 (+42d) |
| IoT and connectivity development | 2027-08-15 → 2027-09-26 (+42d) | 2028-01-01 → 2028-02-12 (+42d) |
| Mobile and cloud integration | 2027-10-16 → 2027-11-27 (+42d) | 2027-12-30 → 2028-02-10 (+42d) |
| Initial smart functionalities | 2027-12-01 → 2028-01-12 (+42d) | 2028-01-15 → 2028-02-26 (+42d) |
| Hardware/software integration | 2028-01-16 → 2028-02-27 (+42d) | 2028-01-31 → 2028-03-13 (+42d) |
| Industrialization, Procurement and Tooling | 2027-06-01 → 2027-07-13 (+42d) | 2028-02-20 → 2028-04-02 (+42d) |
| Supplier identification and selection | 2027-06-01 → 2027-07-13 (+42d) | 2027-08-15 → 2027-09-26 (+42d) |
| Component sourcing | 2027-08-16 → 2027-09-27 (+42d) | 2027-10-10 → 2027-11-21 (+42d) |
| Supplier qualification | 2027-10-11 → 2027-11-22 (+42d) | 2027-11-25 → 2028-01-06 (+42d) |
| Manufacturing process design | 2027-11-26 → 2028-01-07 (+42d) | 2028-01-05 → 2028-02-16 (+42d) |
| Tooling preparation | 2028-01-06 → 2028-02-17 (+42d) | 2028-02-10 → 2028-03-23 (+42d) |
| Production cost analysis | 2028-02-11 → 2028-03-24 (+42d) | 2028-02-20 → 2028-04-02 (+42d) |
| Wave 1 – Core Prototype Development | 2027-10-01 → 2027-11-12 (+42d) | 2028-02-20 → 2028-04-02 (+42d) |
| Prototype component procurement | 2027-10-01 → 2027-11-12 (+42d) | 2027-12-15 → 2028-01-26 (+42d) |
| Mechanical and electrical assembly | 2028-01-01 → 2028-02-12 (+42d) | 2028-01-31 → 2028-03-13 (+42d) |
| Refrigeration system integration | 2028-02-01 → 2028-03-14 (+42d) | 2028-02-05 → 2028-03-18 (+42d) |
| Embedded software integration | 2028-02-06 → 2028-03-19 (+42d) | 2028-02-10 → 2028-03-23 (+42d) |
| Core IoT functionality integration | 2028-02-11 → 2028-03-24 (+42d) | 2028-02-13 → 2028-03-26 (+42d) |
| First integrated prototype | 2028-02-14 → 2028-03-27 (+42d) | 2028-02-15 → 2028-03-28 (+42d) |
| Prototype review and approval | 2028-02-16 → 2028-03-29 (+42d) | 2028-02-20 → 2028-04-02 (+42d) |
| Testing and Quality Assurance | 2028-02-21 → 2028-04-03 (+42d) | 2028-07-20 → 2028-08-31 (+42d) |
| Functional testing | 2028-02-21 → 2028-04-03 (+42d) | 2028-04-10 → 2028-05-22 (+42d) |
| Refrigeration performance testing | 2028-04-11 → 2028-05-23 (+42d) | 2028-05-10 → 2028-06-21 (+42d) |
| Energy-efficiency testing | 2028-05-11 → 2028-06-22 (+42d) | 2028-05-31 → 2028-07-12 (+42d) |
| Reliability and durability testing | 2028-06-01 → 2028-07-13 (+42d) | 2028-06-21 → 2028-08-02 (+42d) |
| Electrical and safety testing | 2028-06-22 → 2028-08-03 (+42d) | 2028-07-02 → 2028-08-13 (+42d) |
| Connectivity testing | 2028-07-03 → 2028-08-14 (+42d) | 2028-07-10 → 2028-08-21 (+42d) |
| Defect correction and retesting | 2028-07-11 → 2028-08-22 (+42d) | 2028-07-20 → 2028-08-31 (+42d) |
| Wave 2 – Advanced Smart Features | 2028-02-21 → 2028-04-03 (+42d) | 2028-07-30 → 2028-09-10 (+42d) |
| Smart screen integration | 2028-02-21 → 2028-04-03 (+42d) | 2028-04-20 → 2028-06-01 (+42d) |
| AI feature development | 2028-04-21 → 2028-06-02 (+42d) | 2028-06-10 → 2028-07-22 (+42d) |
| Advanced software functionalities | 2028-06-11 → 2028-07-23 (+42d) | 2028-06-30 → 2028-08-11 (+42d) |
| User interface development | 2028-06-01 → 2028-07-13 (+42d) | 2028-07-10 → 2028-08-21 (+42d) |
| Integration with Wave 1 architecture | 2028-07-11 → 2028-08-22 (+42d) | 2028-07-15 → 2028-08-26 (+42d) |
| System optimization | 2028-07-16 → 2028-08-27 (+42d) | 2028-07-20 → 2028-08-31 (+42d) |
| Advanced feature validation | 2028-07-21 → 2028-09-01 (+42d) | 2028-07-30 → 2028-09-10 (+42d) |
| Final Validation, Certification and Market Launch | 2028-07-21 → 2028-09-01 (+42d) | 2028-11-20 → 2029-01-01 (+42d) |
| Final system integration | 2028-07-21 → 2028-09-01 (+42d) | 2028-08-10 → 2028-09-21 (+42d) |
| Complete product validation | 2028-08-11 → 2028-09-22 (+42d) | 2028-09-20 → 2028-11-01 (+42d) |
| Regulatory compliance and certification | 2028-09-21 → 2028-11-02 (+42d) | 2028-10-10 → 2028-11-21 (+42d) |
| Final quality approval | 2028-10-11 → 2028-11-22 (+42d) | 2028-10-20 → 2028-12-01 (+42d) |
| Production readiness review | 2028-10-21 → 2028-12-02 (+42d) | 2028-11-01 → 2028-12-13 (+42d) |
| Launch preparation | 2028-11-02 → 2028-12-14 (+42d) | 2028-11-15 → 2028-12-27 (+42d) |
| Commercial launch and project closure | 2028-11-16 → 2028-12-28 (+42d) | 2028-11-20 → 2029-01-01 (+42d) |

## Version 3 (saved 2026-11-25)

Note of the change: Revise project plan with new dates and tasks

Last finish stays 2029-01-01.

Changed:

| Task | Start | Finish |
| --- | --- | --- |
| Project Initiation and Market Research |  | 2027-03-03 → 2027-02-18 (-13d) |
| Market and competitor analysis | 2027-01-09 → 2027-01-05 (-4d) | 2027-01-22 → 2027-01-18 (-4d) |
| Customer needs and market positioning | 2027-01-23 → 2027-01-15 (-8d) | 2027-02-05 → 2027-01-28 (-8d) |
| Technical and economic feasibility | 2027-02-06 → 2027-01-29 (-8d) | 2027-02-13 → 2027-02-05 (-8d) |
| Initial risk assessment | 2027-02-14 → 2027-02-01 (-13d) | 2027-03-03 → 2027-02-18 (-13d) |
| Product Requirements and System Architecture | 2027-03-04 → 2027-01-20 (-43d) | 2027-07-01 → 2027-04-05 (-87d) |
| Functional requirements | 2027-03-04 → 2027-01-20 (-43d) | 2027-03-24 → 2027-02-09 (-43d) |
| Technical specifications | 2027-03-25 → 2027-02-01 (-52d) | 2027-04-13 → 2027-02-20 (-52d) |
| System architecture | 2027-04-14 → 2027-02-15 (-58d) | 2027-05-04 → 2027-03-08 (-57d) |
| Hardware/software interface definition | 2027-05-05 → 2027-03-01 (-65d) | 2027-05-25 → 2027-03-21 (-65d) |
| Cost and performance targets | 2027-05-26 → 2027-02-15 (-100d) | 2027-06-15 → 2027-03-07 (-100d) |
| Requirements approval | 2027-06-16 → 2027-03-22 (-86d) | 2027-07-01 → 2027-04-05 (-87d) |
| Hardware and Mechanical Engineering | 2027-05-13 → 2027-03-01 (-73d) | 2028-03-02 → 2027-10-20 (-134d) |
| Refrigeration system engineering | 2027-05-13 → 2027-03-01 (-73d) | 2027-08-11 → 2027-05-30 (-73d) |
| Cabinet and insulation design | 2027-08-12 → 2027-05-15 (-89d) | 2027-10-27 → 2027-07-30 (-89d) |
| Electrical and electronic architecture | 2027-08-12 → 2027-05-15 (-89d) | 2027-10-27 → 2027-07-30 (-89d) |
| Sensors and component selection | 2027-10-28 → 2027-07-01 (-119d) | 2027-12-12 → 2027-08-15 (-119d) |
| CAD design and engineering reviews | 2027-12-13 → 2027-08-01 (-134d) | 2028-02-16 → 2027-10-05 (-134d) |
| Design freeze | 2028-02-17 → 2027-10-06 (-134d) | 2028-03-02 → 2027-10-20 (-134d) |
| Software, Embedded Systems and IoT | 2027-05-13 → 2027-03-01 (-73d) | 2028-03-13 → 2028-01-15 (-58d) |
| Embedded software architecture | 2027-05-13 → 2027-03-01 (-73d) | 2027-08-11 → 2027-05-30 (-73d) |
| Firmware development | 2027-08-12 → 2027-06-01 (-72d) | 2027-12-12 → 2027-10-01 (-72d) |
| Sensor data acquisition | 2027-09-12 → 2027-07-01 (-73d) | 2027-11-26 → 2027-09-15 (-72d) |
| IoT and connectivity development | 2027-09-26 → 2027-07-15 (-73d) | 2028-02-12 → 2027-12-01 (-73d) |
| Mobile and cloud integration | 2027-11-27 → 2027-10-01 (-57d) | 2028-02-10 → 2027-12-15 (-57d) |
| Initial smart functionalities | 2028-01-12 → 2027-11-01 (-72d) | 2028-02-26 → 2027-12-15 (-73d) |
| Hardware/software integration | 2028-02-27 → 2027-12-16 (-73d) | 2028-03-13 → 2028-01-15 (-58d) |
| Industrialization, Procurement and Tooling | 2027-07-13 → 2027-05-01 (-73d) | 2028-04-02 → 2027-12-20 (-104d) |
| Supplier identification and selection | 2027-07-13 → 2027-05-01 (-73d) | 2027-09-26 → 2027-07-15 (-73d) |
| Component sourcing | 2027-09-27 → 2027-07-01 (-88d) | 2027-11-21 → 2027-09-15 (-67d) |
| Supplier qualification | 2027-11-22 → 2027-09-01 (-82d) | 2028-01-06 → 2027-10-15 (-83d) |
| Manufacturing process design | 2028-01-07 → 2027-10-01 (-98d) | 2028-02-16 → 2027-11-15 (-93d) |
| Tooling preparation | 2028-02-17 → 2027-11-01 (-108d) | 2028-03-23 → 2027-12-15 (-99d) |
| Production cost analysis | 2028-03-24 → 2027-12-01 (-114d) | 2028-04-02 → 2027-12-20 (-104d) |
| Wave 1 – Core Prototype Development | 2027-11-12 → 2027-09-01 (-72d) | 2028-04-02 → 2028-02-05 (-57d) |
| Prototype component procurement | 2027-11-12 → 2027-09-01 (-72d) | 2028-01-26 → 2027-11-15 (-72d) |
| Mechanical and electrical assembly | 2028-02-12 → 2027-12-01 (-73d) | 2028-03-13 → 2027-12-31 (-73d) |
| Refrigeration system integration | 2028-03-14 → 2028-01-01 (-73d) | 2028-03-18 → 2028-01-10 (-68d) |
| Embedded software integration | 2028-03-19 → 2028-01-11 (-68d) | 2028-03-23 → 2028-01-20 (-63d) |
| Core IoT functionality integration | 2028-03-24 → 2028-01-21 (-63d) | 2028-03-26 → 2028-01-25 (-61d) |
| First integrated prototype | 2028-03-27 → 2028-01-26 (-61d) | 2028-03-28 → 2028-01-27 (-61d) |
| Prototype review and approval | 2028-03-29 → 2028-01-28 (-61d) | 2028-04-02 → 2028-02-05 (-57d) |
| Testing and Quality Assurance | 2028-04-03 → 2028-02-06 (-57d) | 2028-08-31 → 2028-05-30 (-93d) |
| Functional testing | 2028-04-03 → 2028-02-06 (-57d) | 2028-05-22 → 2028-03-25 (-58d) |
| Refrigeration performance testing | 2028-05-23 → 2028-03-15 (-69d) | 2028-06-21 → 2028-04-15 (-67d) |
| Energy-efficiency testing | 2028-06-22 → 2028-04-01 (-82d) | 2028-07-12 → 2028-04-21 (-82d) |
| Reliability and durability testing | 2028-07-13 → 2028-04-15 (-89d) | 2028-08-02 → 2028-05-05 (-89d) |
| Electrical and safety testing | 2028-08-03 → 2028-04-25 (-100d) | 2028-08-13 → 2028-05-05 (-100d) |
| Connectivity testing | 2028-08-14 → 2028-05-01 (-105d) | 2028-08-21 → 2028-05-10 (-103d) |
| Defect correction and retesting | 2028-08-22 → 2028-05-11 (-103d) | 2028-08-31 → 2028-05-30 (-93d) |
| Wave 2 – Advanced Smart Features | 2028-04-03 → 2028-02-06 (-57d) | 2028-09-10 → 2028-06-20 (-82d) |
| Smart screen integration | 2028-04-03 → 2028-02-06 (-57d) | 2028-06-01 → 2028-04-05 (-57d) |
| AI feature development | 2028-06-02 → 2028-03-15 (-79d) | 2028-07-22 → 2028-05-05 (-78d) |
| Advanced software functionalities | 2028-07-23 → 2028-05-01 (-83d) | 2028-08-11 → 2028-05-20 (-83d) |
| User interface development | 2028-07-13 → 2028-03-01 (-134d) | 2028-08-21 → 2028-04-20 (-123d) |
| Integration with Wave 1 architecture | 2028-08-22 → 2028-05-21 (-93d) | 2028-08-26 → 2028-05-25 (-93d) |
| System optimization | 2028-08-27 → 2028-05-26 (-93d) | 2028-08-31 → 2028-06-05 (-87d) |
| Advanced feature validation | 2028-09-01 → 2028-06-06 (-87d) | 2028-09-10 → 2028-06-20 (-82d) |
| Complete product validation | 2028-09-22 → 2028-09-15 (-7d) | 2028-11-01 → 2028-10-25 (-7d) |
| Regulatory compliance and certification | 2028-11-02 → 2028-10-01 (-32d) | 2028-11-21 → 2028-10-20 (-32d) |
| Final quality approval | 2028-11-22 → 2028-10-21 (-32d) | 2028-12-01 → 2028-10-30 (-32d) |
| Production readiness review | 2028-12-02 → 2028-11-01 (-31d) | 2028-12-13 → 2028-11-12 (-31d) |
| Launch preparation | 2028-12-14 → 2028-11-13 (-31d) | 2028-12-27 → 2028-12-26 (-1d) |

## Version 4 (saved 2026-11-25)

Note of the change: Update task dates in project plan

Last finish stays 2029-01-01.

Changed:

| Task | Start |
| --- | --- |
| Technical and economic feasibility | 2027-01-29 → 2027-01-22 (-7d) |
| Initial risk assessment | 2027-02-01 → 2027-01-29 (-3d) |
| CAD design and engineering reviews | 2027-08-01 → 2027-07-15 (-17d) |
| Manufacturing process design | 2027-10-01 → 2027-09-15 (-16d) |
| Mechanical and electrical assembly | 2027-12-01 → 2027-11-08 (-23d) |
| Refrigeration system integration | 2028-01-01 → 2027-12-20 (-12d) |
| Embedded software integration | 2028-01-11 → 2028-01-05 (-6d) |
| Core IoT functionality integration | 2028-01-21 → 2028-01-15 (-6d) |
| Energy-efficiency testing | 2028-04-01 → 2028-03-29 (-3d) |
| Defect correction and retesting | 2028-05-11 → 2028-05-06 (-5d) |
| Advanced software functionalities | 2028-05-01 → 2028-04-15 (-16d) |
| System optimization | 2028-05-26 → 2028-05-22 (-4d) |
| Advanced feature validation | 2028-06-06 → 2028-06-01 (-5d) |
| Launch preparation | 2028-11-13 → 2028-11-06 (-7d) |
